# module03_ex03

Schedule from MS Project, 2026-01-30 to 2028-01-03, status date 2026-09-25, costs in $, A marks actual dates.

## Calendars

- Standard: Mon-Fri 08:00-12:00, 13:00-17:00; Sat-Sun off.

## Resources

| Resource | Group | Unit | Rate |
| --- | --- | --- | --- |
| Architect | Consultant |  | 9 |
| Draftsperson | Staff |  | 7 |
| Building Clerk | Staff |  | 8 |
| Supervisor | Staff |  | 12 |
| Rigger | Wages |  | 5 |
| Boilermaker | Wages |  | 5 |
| Welder | Wages |  | 6 |
| Carpenter | Wages |  | 7 |
| Painter | Wages |  | 6 |
| Labourer | Wages |  | 6 |
| Driver | Wages |  | 8 |
| No Barrier Fencing | Contractor |  | 3 |
| Rock Solid Concrete | Contractor |  | 4 |
| Listen Ear Audio | Contractor |  | 5 |
| In Focus Video | Contractor |  | 5 |
| Pure Grass Turf | Contractor |  | 5 |
| Building Inspector | Government |  | 5 |
| High Jib Crane | Equipment |  | 7 |
| Grader | Equipment |  | 6 |
| Air Compressor | Equipment |  | 7 |
| Utility | Equipment |  | 5 |
| Electrician | Staff |  | 7 |
| Plumber | Staff |  | 5 |
| Astro Turf | Material | Square Matre | 12 |
| Paint | Ute | Ultre | 20 |
| Welde |  |  |  |
| Tax |  |  |  |
| Bonus |  |  |  |
| Part Time Fee |  |  |  |
| Logictis Cost |  |  |  |

## Schedule

| ID | WBS | Task | Type | Duration | Start | Finish | Predecessors | Complete | Remaining | Total slack | Free slack | Resources | Work | Actual work | Cost | Actual cost |
| --- | --- | --- | --- | --- | --- | --- | --- | --- | --- | --- | --- | --- | --- | --- | --- | --- |
| 1 | 1 | **Planning** |  | 88d | 2026-01-30 A | 2026-06-02 A |  | 100% |  |  |  |  | 648h | 648h | 5,500 | 5,500 |
| 2 | 1.1 | Creating architectural plans |  | 12w | 2026-01-30 A | 2026-04-23 A |  | 100% |  |  |  | Architect; Building Clerk [25%]; Draftsperson [200%] | 360h | 360h | 2,880 | 2,880 |
| 3 | 1.2 | Submit plans for approval |  | 1mo | 2026-04-24 A | 2026-05-21 A | 2 | 100% |  |  |  | Architect | 160h | 160h | 1,440 | 1,440 |
| 4 | 1.3 | Order materials |  | 8d | 2026-05-22 A | 2026-06-02 A | 3 | 100% |  |  |  | Building Clerk; Draftsperson | 128h | 128h | 960 | 960 |
| 5 | 1.4 | Planning Completed | milestone | 0d | 2026-06-02 A | 2026-06-02 A | 2, 3, 4 | 100% |  |  |  | Part Time Fee; Bonus |  |  | 220 | 220 |
| 6 | 2 | **Site Works** |  | 32d | 2026-06-03 A | 2026-07-16 A |  | 100% |  |  |  |  | 652h | 652h | 5,528 | 5,528 |
| 7 | 2.1 | Erect fencing |  | 3d | 2026-06-03 A | 2026-06-05 A | 5 | 100% |  |  |  | No Barrier Fencing | 24h | 24h | 72 | 72 |
| 8 | 2.2 | Erect site building |  | 4d | 2026-06-08 A | 2026-06-11 A | 7 | 100% |  |  |  | Carpenter [400%]; Labourer; No Barrier Fencing; Supervisor | 128h | 128h | 896 | 896 |
| 9 | 2.3 | Clear and level site |  | 3w | 2026-06-12 A | 2026-07-02 A | 8 | 100% |  |  |  | Supervisor; Driver [200%]; Grader [200%] | 360h | 360h | 3,120 | 3,120 |
| 10 | 2.4 | Prepare drainage infrastructure |  | 2w | 2026-07-03 A | 2026-07-16 A | 9 | 100% |  |  |  | Plumber [200%]; Supervisor [50%] | 80h | 80h | 680 | 680 |
| 11 | 2.5 | Prepare cabling infrastructure |  | 1w | 2026-07-03 A | 2026-07-09 A | 9 | 100% |  |  |  | Electrician [300%]; Supervisor [50%] | 60h | 60h | 520 | 520 |
| 12 | 2.6 | Site Works Completed | milestone | 0d | 2026-07-16 A | 2026-07-16 A | 7, 8, 9, 10, 11 | 100% |  |  |  | Logictis Cost |  |  | 240 | 240 |
| 13 | 3 | **Building Construction** |  | 334d | 2026-07-17 A | 2027-10-27 |  | 15% | 284.48d | 0d |  |  | 8472h | 3372h | 59,102 | 21,296 |
| 14 | 3.1 | Pour foundations |  | 4d | 2026-07-17 A | 2026-07-22 A | 12 | 100% |  |  |  | Rock Solid Concrete | 32h | 32h | 128 | 128 |
| 15 | 3.2 | Erect steelwork |  | 6mo | 2026-07-23 A | 2027-01-06 | 14 | 39% | 3.65mo | 0d |  | Boilermaker [600%]; Driver [200%]; High Jib Crane; Labourer [600%]; Rigger [600%]; Supervisor [50%]; Utility; Welder [500%] | 3840h | 3340h | 25,920 | 21,168 |
| 16 | 3.3 | Erect wall |  | 8mo | 2027-01-07 | 2027-08-18 | 15 |  |  | 0d |  | Supervisor [50%]; Carpenter [700%]; Labourer [400%]; Driver; Grader; Air Compressor; Electrician [75%]; Plumber [25%] | 2560h |  | 18,560 |  |
| 17 | 3.4 | Install roofing superstructure |  | 4w | 2027-08-19 | 2027-09-15 | 16 |  |  | 0d |  | Supervisor [50%]; Rigger [500%]; Boilermaker [500%]; Welder [300%]; Labourer [500%]; Driver [200%]; High Jib Crane; Utility; Air Compressor; Plumber [500%] | 800h |  | 5,280 |  |
| 18 | 3.5 | Install roofing retracting mechanism |  | 2w | 2027-09-16 | 2027-09-29 | 17 |  |  | 0d |  | Supervisor [50%]; Welder; Boilermaker [200%]; Rigger [200%]; Electrician [200%]; Driver; High Jib Crane | 280h |  | 2,000 |  |
| 19 | 3.6 | Erect seating tiers |  | 6w | 2027-09-16 | 2027-10-27 | 18SS |  |  | 0d |  | Supervisor [50%]; Carpenter [800%]; Welde [200%]; Boilermaker [200%]; Labourer [500%]; Driver; Utility; Air Compressor | 960h |  | 6,000 |  |
| 20 | 3.7 | Building Construction Completed | milestone | 0d | 2027-10-27 | 2027-10-27 | 14, 15, 16, 17, 18, 19 |  |  | 0d |  | Logictis Cost; Bonus |  |  | 1,214 |  |
| 21 | 4 | **Fit Out** |  | 14d | 2027-10-28 | 2027-11-16 |  |  |  | 0d |  |  | 1040h |  | 6,170 |  |
| 22 | 4.1 | Fit all windows and doors |  | 1w | 2027-10-28 | 2027-11-03 | 20 |  |  | 9d |  | Carpenter [500%]; Labourer [200%] | 160h |  | 1,040 |  |
| 23 | 4.2 | Install electrical cabling |  | 0.5w | 2027-10-28 | 2027-11-01 | 20 |  |  | 3.5d | 0d | Electrician [300%]; Labourer [200%] | 80h |  | 520 |  |
| 24 | 4.3 | Install electrical fittings and fixtures |  | 0.67w | 2027-11-01 | 2027-11-04 | 23 |  |  | 8.17d |  | Electrician [300%] | 80h |  | 560 |  |
| 25 | 4.4 | Install all plumbing |  | 1w | 2027-10-28 | 2027-11-03 | 20 |  |  | 6.5d | 0d | Plumber [200%]; Labourer [200%] | 160h |  | 880 |  |
| 26 | 4.5 | Install plumbing fixtures and fittings |  | 0.5w | 2027-11-04 | 2027-11-08 | 25 |  |  | 6.5d |  | Plumber [200%] | 40h |  | 200 |  |
| 27 | 4.6 | Lay astro turf |  | 1w | 2027-10-28 | 2027-11-03 | 20 |  |  | 9d |  | Pure Grass Turf | 40h |  | 200 |  |
| 28 | 4.7 | Erect handrails and fencing |  | 1w | 2027-10-28 | 2027-11-03 | 20 |  |  | 0d |  | Welder [400%]; Boilermaker [200%] | 160h |  | 880 |  |
| 29 | 4.8 | Paint rooms, fixtures, fittings, etc. |  | 0.2mo | 2027-11-04 | 2027-11-09 | 28 |  |  | 0d |  | Painter [500%] | 160h |  | 960 |  |
| 30 | 4.9 | Install PA system |  | 2d | 2027-11-01 | 2027-11-03 | 23 |  |  | 4.5d |  | Listen Ear Audio | 16h |  | 80 |  |
| 31 | 4.10 | Install video imaging equipment |  | 3d | 2027-11-01 | 2027-11-04 | 23 |  |  | 3.5d |  | In Focus Video | 24h |  | 120 |  |
| 32 | 4.11 | Fit out control room |  | 1w | 2027-11-10 | 2027-11-16 | 29, 30, 31 |  |  | 0d |  | Electrician [200%]; Listen Ear Audio; In Focus Video | 120h |  | 680 |  |
| 33 | 4.12 | Te | milestone | 0d | 2027-11-16 | 2027-11-16 | 22, 23, 24, 25, 26, 27, 28, 29, 30, 31, 32 |  |  | 0d |  | Tax |  |  | 50 |  |

| ID | WBS | Task | Type | Duration | Start | Finish | Predecessors | Total slack | Resources | Work | Cost |
| --- | --- | --- | --- | --- | --- | --- | --- | --- | --- | --- | --- |
| 34 | 5 | **Commissioning** |  | 33.5d | 2027-11-17 | 2028-01-03 |  | 0d |  | 400h | 3,340 |
| 35 | 5.1 | Test roof mechanism |  | 1w | 2027-11-17 | 2027-11-23 | 33 | 0d | Supervisor; Electrician [200%]; Rigger | 120h | 960 |
| 36 | 5.2 | Test PA system |  | 2d | 2027-11-17 | 2027-11-18 | 33 | 3d | Listen Ear Audio | 16h | 80 |
| 37 | 5.3 | Test video imaging equipment |  | 2d | 2027-11-17 | 2027-11-18 | 33 | 3d | In Focus Video | 16h | 80 |
| 38 | 5.4 | Test control room equipment |  | 5w | 2027-11-24 | 2027-12-28 | 35, 36, 37 | 0d | Supervisor; Listen Ear Audio [20%]; In Focus Video [20%]; Architect; Electrician [200%] | 200h | 1,520 |
| 39 | 5.5 | Obtain official occupancy |  | 1d | 2027-12-29 | 2027-12-29 | 38 | 0d | Architect; Building Clerk; Supervisor | 24h | 232 |
| 40 | 5.6 | Obtain safety certification |  | 2d | 2027-12-30 | 2027-12-31 | 39 | 0d | Supervisor | 16h | 192 |
| 41 | 5.7 | Official opening |  | 0.5d | 2028-01-03 | 2028-01-03 | 40 | 0d | Supervisor [200%] | 8h | 96 |
| 42 | 5.8 | Commissioning Completed | milestone | 0d | 2028-01-03 | 2028-01-03 | 35, 36, 37, 38, 39, 40, 41 | 0d | Bonus |  | 180 |
