# DeTai_Nhom04_v2

Schedule from MS Project, 2026-02-05 to 2026-08-20, costs in ₫.

## Calendars

- Standard: Mon-Fri 08:00-12:00, 13:00-17:00; Sat-Sun off.

## Resources

| Resource | Rate |
| --- | --- |
| Nguyễn Văn Minh (Project Sponsor / CEO) |  |
| Trần Thị Hương (Hotel Operations Director) |  |
| Nguyễn Trần Gia Sĩ (Project Manager (PM)) | 150000 |
| Nguyễn Hoàng Nguyên Vũ (Backend Developer Lead) | 250000 |
| Đào Quốc Tuấn (Frontend Developer Lead) | 200000 |
| Nguyễn Trung Nguyên (AI & Analytics / BA Lead) | 180000 |
| Lê Thị Mai Anh (QC / Tester Lead) | 120000 |
| Phòng Kế toán – Tài chính (Stakeholder nội bộ) |  |
| Nhân viên Lễ tân (Đại diện) |  |
| Trần Văn Trung (QA Lead) | 160000 |
| Nguyễn Văn Tiến (DevOps Lead) | 220000 |
| Trần Văn Sĩ (Designer Lead) | 140000 |
| Laptop Developer | 15000000 |
| Màn hình phụ (External Monitor) | 500000 |
| Figma (Professional) | 350000 |
| GitHub / GitLab (Team Plan) | 1200000 |
| Jira Software (Standard) | 800000 |
| Microsoft Project (Standard) | 3200000 |
| Postman (Team) | 550000 |
| VS Code + Extensions |  |
| Slack (Pro) | 3400000 |
| Notion / Confluence (Standard) | 1600000 |
| Phòng họp / Workstation |  |
| VNPay Payment API |  |
| AWS EC2 (Web Server) |  |
| AWS RDS (Database) |  |
| AWS S3 (Storage) |  |
| AWS CloudFront (CDN) |  |
| AWS WAF + Shield |  |
| Domain Name (.vn) |  |
| SSL Certificate (Wildcard) |  |
| Email Service (SendGrid / SES) |  |
| Firebase / Push Notification |  |
| CI/CD — GitHub Actions |  |
| Monitoring (Datadog / New Relic) |  |
| SonarQube (Code Quality) |  |
| Penetration Testing (Security Audit) |  |
| Load Testing Tool (k6 Cloud / BlazeMeter) |  |
| Backup & Disaster Recovery (AWS Backup) |  |
| Software License (Framework / Library) |  |
| Google Maps / Mapbox API |  |
| Chi phí dự phòng (Contingency Reserve) |  |

## Schedule

| ID | WBS | Task | Type | Duration | Start | Finish | Predecessors | Total slack | Free slack | Resources | Work | Cost | Risk Level | Risk IDs | Probability (%) |
| --- | --- | --- | --- | --- | --- | --- | --- | --- | --- | --- | --- | --- | --- | --- | --- |
| 1 | 1 | **Khởi động dự án** |  | 36d | 2026-02-05 08:00 | 2026-03-26 17:00 |  | 0d |  |  | 308h | 46,600,000 |  |  |  |
| 2 | 1.1 | Project Charter |  | 5d | 2026-02-05 08:00 | 2026-02-11 17:00 |  | 0d |  | Nguyễn Trần Gia Sĩ (Project Manager (PM)); Nguyễn Văn Minh (Project Sponsor / CEO) [50%]; Phòng họp / Workstation | 60h | 6,000,000 | High | R-01 | 40 |
| 3 | 1.2 | Stakeholder Register |  | 3d | 2026-02-12 08:00 | 2026-02-16 17:00 | 2 | 0d |  | Nguyễn Trần Gia Sĩ (Project Manager (PM)); Phòng họp / Workstation | 24h | 3,600,000 | Medium | R-23 | 60 |
| 4 | 1.3 | Project Management Plan |  | 28d | 2026-02-17 08:00 | 2026-03-26 17:00 | 2, 3 | 0d |  | Nguyễn Văn Minh (Project Sponsor / CEO) [50%]; Chi phí dự phòng (Contingency Reserve) [0.1%]; GitHub / GitLab (Team Plan); Jira Software (Standard); Microsoft Project (Standard); Nguyễn Trần Gia Sĩ (Project Manager (PM)); Notion / Confluence (Standard); Phòng họp / Workstation; Slack (Pro) | 224h | 37,000,000 | Medium | R-03 | 50 |
| 5 | 1.4 | Hoàn thành Khởi động dự án | milestone | 0d | 2026-02-05 08:00 | 2026-02-05 08:00 |  | 141d |  |  |  |  |  |  |  |
| 6 | 2 | **Phân tích & Thiết kế** |  | 60d | 2026-02-05 08:00 | 2026-04-29 17:00 |  | 36d |  |  | 464h | 229,860,000 |  |  |  |
| 7 | 2.1 | Software Requirements Spec (SRS) |  | 14d | 2026-03-27 08:00 | 2026-04-15 17:00 | 4 | 0d |  | Nguyễn Trung Nguyên (AI & Analytics / BA Lead); Notion / Confluence (Standard); Trần Thị Hương (Hotel Operations Director); Laptop Developer; Màn hình phụ (External Monitor) | 224h | 37,260,000 | High | R-02 | 50 |
| 8 | 2.2 | Database & API Design |  | 10d | 2026-04-16 08:00 | 2026-04-29 17:00 | 7 | 0d |  | AWS RDS (Database) [0.1%]; Laptop Developer [300%]; Màn hình phụ (External Monitor) [300%]; Nguyễn Hoàng Nguyên Vũ (Backend Developer Lead) | 80h | 69,700,000 | High | R-03 | 60 |
| 9 | 2.3 | UI/UX Mockup & Prototype |  | 10d | 2026-03-27 08:00 | 2026-04-09 17:00 | 7SS | 24d |  | Đào Quốc Tuấn (Frontend Developer Lead); Figma (Professional) [200%]; Laptop Developer [600%]; Màn hình phụ (External Monitor) [600%]; Software License (Framework / Library) [0.1%]; Trần Văn Sĩ (Designer Lead) | 160h | 122,900,000 | High | R-04 | 10 |
| 10 | 2.4 | Chốt thiết kế & Yêu cầu phần mềm (Sign-off SRS & Design) | milestone | 0d | 2026-02-05 08:00 | 2026-02-05 08:00 |  | 141d |  |  |  |  |  |  |  |
| 11 | 3 | **Phát triển hệ thống** |  | 90d | 2026-02-05 08:00 | 2026-06-10 17:00 |  | 51d |  |  | 1008h | 613,340,000 |  |  |  |
| 12 | 3.1 | **Backend & Cơ sở dữ liệu** |  | 80d | 2026-02-05 08:00 | 2026-05-27 17:00 |  | 60d |  |  | 280h | 138,100,000 |  |  |  |
| 13 | 3.1.1 | API Đặt phòng |  | 20d | 2026-04-30 08:00 | 2026-05-27 17:00 | 8 | 0d |  | AWS S3 (Storage) [0.1%]; GitHub / GitLab (Team Plan); Laptop Developer [300%]; Màn hình phụ (External Monitor) [300%]; Nguyễn Hoàng Nguyên Vũ (Backend Developer Lead); Postman (Team) | 160h | 88,750,000 | High | R-05 | 40 |
| 14 | 3.1.2 | API Quản lý phòng & giá |  | 15d | 2026-05-07 08:00 | 2026-05-27 17:00 | 13SS+5d | 0d |  | GitHub / GitLab (Team Plan); Laptop Developer; Màn hình phụ (External Monitor) [300%]; Nguyễn Hoàng Nguyên Vũ (Backend Developer Lead); Postman (Team) [300%] | 120h | 49,350,000 | High | R-06 | 50 |
| 15 | 3.1.3 | Hoàn thiện Backend & Cơ sở dữ liệu | milestone | 0d | 2026-02-05 08:00 | 2026-02-05 08:00 |  | 141d |  |  |  |  |  |  |  |
| 16 | 3.2 | **Frontend Website đặt phòng** |  | 90d | 2026-02-05 08:00 | 2026-06-10 17:00 |  | 51d |  |  | 280h | 120,900,000 |  |  |  |
| 17 | 3.2.1 | Trang tìm & đặt phòng |  | 20d | 2026-05-14 08:00 | 2026-06-10 17:00 | 13SS+10d, 9 | 0d |  | AWS CloudFront (CDN) [0.1%]; Đào Quốc Tuấn (Frontend Developer Lead); Google Maps / Mapbox API [0.1%]; Laptop Developer; Màn hình phụ (External Monitor); Software License (Framework / Library) [0.1%] | 160h | 50,400,000 | High | R-07 | 50 |
| 18 | 3.2.2 | Trang tài khoản khách hàng |  | 15d | 2026-05-21 08:00 | 2026-06-10 17:00 | 17SS+5d | 0d |  | Đào Quốc Tuấn (Frontend Developer Lead); Laptop Developer [300%]; Màn hình phụ (External Monitor) [300%] | 120h | 70,500,000 | High | R-08 | 60 |
| 19 | 3.2.3 | Hoàn thiện Frontend Website đặt phòng | milestone | 0d | 2026-02-05 08:00 | 2026-02-05 08:00 |  | 141d |  |  |  |  |  |  |  |
| 20 | 3.3 | **Admin Dashboard** |  | 90d | 2026-02-05 08:00 | 2026-06-10 17:00 |  | 51d |  |  | 240h | 141,000,000 |  |  |  |
| 21 | 3.3.1 | Module quản lý booking/phòng |  | 15d | 2026-05-14 08:00 | 2026-06-03 17:00 | 14SS+5d, 9 | 0d |  | Đào Quốc Tuấn (Frontend Developer Lead); Laptop Developer [300%]; Màn hình phụ (External Monitor) [300%] | 120h | 70,500,000 | High | R-09 | 70 |
| 22 | 3.3.2 | Module báo cáo & thống kê |  | 15d | 2026-05-21 08:00 | 2026-06-10 17:00 | 21SS+5d | 0d |  | Đào Quốc Tuấn (Frontend Developer Lead); Laptop Developer [300%]; Màn hình phụ (External Monitor) [300%] | 120h | 70,500,000 | High | R-10 | 70 |
| 23 | 3.3.3 | Hoàn thiện Admin Dashboard | milestone | 0d | 2026-02-05 08:00 | 2026-02-05 08:00 |  | 141d |  |  |  |  |  |  |  |
| 24 | 3.4 | **Tích hợp VNPay & Email** |  | 87d | 2026-02-05 08:00 | 2026-06-05 17:00 |  | 54d |  |  | 96h | 128,300,000 |  |  |  |
| 25 | 3.4.1 | Tích hợp cổng VNPay |  | 7d | 2026-05-28 08:00 | 2026-06-05 17:00 | 13 | 3d | 0d | Laptop Developer [300%]; Màn hình phụ (External Monitor) [300%]; Nguyễn Hoàng Nguyên Vũ (Backend Developer Lead); VNPay Payment API [0.1%] | 56h | 70,500,000 | High | R-11 | 50 |
| 26 | 3.4.2 | Email xác nhận tự động |  | 5d | 2026-05-28 08:00 | 2026-06-03 17:00 | 25SS | 5d |  | Email Service (SendGrid / SES) [0.1%]; Firebase / Push Notification [0.1%]; Laptop Developer [300%]; Màn hình phụ (External Monitor) [300%]; Nguyễn Hoàng Nguyên Vũ (Backend Developer Lead) | 40h | 57,800,000 | High | R-12 | 50 |
| 27 | 3.4.3 | Hoàn thiện Tích hợp VNPay & Email | milestone | 0d | 2026-02-05 08:00 | 2026-02-05 08:00 |  | 141d |  |  |  |  |  |  |  |
| 28 | 3.5 | Code Freeze (Hoàn tất lập trình Backend & Frontend) | milestone | 0d | 2026-02-05 08:00 | 2026-02-05 08:00 |  | 141d |  |  |  |  |  |  |  |
| 29 | 3.6 | CI/CD Pipeline |  | 14d | 2026-04-23 08:00 | 2026-05-12 17:00 | 8SS+5d | 72d |  | AWS EC2 (Web Server) [0.1%]; AWS RDS (Database) [0.1%]; CI/CD — GitHub Actions [0.1%]; Domain Name (.vn) [0.1%]; GitHub / GitLab (Team Plan); Nguyễn Văn Tiến (DevOps Lead); SSL Certificate (Wildcard) [0.1%]; Laptop Developer [300%]; Màn hình phụ (External Monitor) [300%]; Slack (Pro) | 112h | 85,040,000 | High | R-13 | 50 |

Notes:
- 2: Scope chưa rõ do thiếu thông tin ban đầu, có thể dẫn đến hiểu sai yêu cầu. Cần kickoff và xác nhận phạm vi. / Risk Owner: Nguyễn Trần Gia Sĩ (Project Manager (PM))
- 3: Stakeholder không thống nhất mục tiêu, dễ gây thay đổi. Cần xác nhận người quyết định chính. / Risk Owner: Nguyễn Trần Gia Sĩ (Project Manager (PM))
- 4: Kế hoạch chưa chính xác do ước lượng sai. Cần dùng buffer và theo dõi thường xuyên. / Risk Owner: Nguyễn Trần Gia Sĩ (Project Manager (PM))
- 7: Requirement chưa rõ, dễ hiểu sai chức năng. Cần workshop và làm rõ use case. / Risk Owner: Nguyễn Trung Nguyên (AI & Analytics / BA Lead)
- 8: Scope creep do thêm yêu cầu ngoài phạm vi. Cần quản lý change request. / Risk Owner: Nguyễn Trung Nguyên (AI & Analytics / BA Lead)
- 9: Requirement chưa được validate, có thể sai lệch. Cần review và sign-off. / Risk Owner: Trần Văn Sĩ (Designer Lead)
- 13: API phức tạp, dễ phát sinh lỗi logic. Cần chuẩn hóa API và viết unit test đầy đủ. / Risk Owner: Nguyễn Hoàng Nguyên Vũ (Backend Developer Lead)
- 14: Backend có thể phát sinh bug nghiệp vụ. Cần code review và test thường xuyên. / Risk Owner: Nguyễn Hoàng Nguyên Vũ (Backend Developer Lead)
- 17: Lỗi tích hợp FE-BE khi API thay đổi. Cần test integration thường xuyên và sync team. / Risk Owner: Đào Quốc Tuấn (Frontend Developer Lead)
- 18: Dữ liệu hiển thị không đồng bộ. Cần validate response và thêm logging. / Risk Owner: Đào Quốc Tuấn (Frontend Developer Lead)
- 21: API mismatch khi tích hợp module, dễ gây lỗi chức năng. Cần test API sớm. / Risk Owner: Nguyễn Hoàng Nguyên Vũ (Backend Developer Lead), Đào Quốc Tuấn (Frontend Developer Lead)
- 22: Thiếu test cho báo cáo, dễ sai số liệu. Cần bổ sung test case. / Risk Owner: Nguyễn Trung Nguyên (AI & Analytics / BA Lead)
- 25: VNPay phản hồi không ổn định, có thể gián đoạn thanh toán. Cần retry và fallback. / Risk Owner: Nguyễn Hoàng Nguyên Vũ (Backend Developer Lead), Đào Quốc Tuấn (Frontend Developer Lead)
- 26: Email có thể gửi thất bại do lỗi SMTP. Cần retry và log lỗi. / Risk Owner: Nguyễn Hoàng Nguyên Vũ (Backend Developer Lead), Đào Quốc Tuấn (Frontend Developer Lead)
- 29: CI/CD config sai, gây fail build/deploy. Cần checklist và review pipeline. / Risk Owner: Nguyễn Văn Tiến (DevOps Lead)

| ID | WBS | Task | Type | Duration | Start | Finish | Predecessors | Total slack | Constraint | Resources | Work | Cost | Risk Level | Risk IDs | Probability (%) |
| --- | --- | --- | --- | --- | --- | --- | --- | --- | --- | --- | --- | --- | --- | --- | --- |
| 30 | 4 | **Kiểm thử hệ thống** |  | 110d | 2026-02-05 08:00 | 2026-07-08 17:00 |  | 31d |  |  | 880h | 378,170,000 |  |  |  |
| 31 | 4.1 | Test Plan & Test Cases |  | 7d | 2026-03-27 08:00 | 2026-04-06 17:00 | 7SS | 98d |  | Lê Thị Mai Anh (QC / Tester Lead); Postman (Team); Trần Văn Trung (QA Lead); Laptop Developer [400%]; Màn hình phụ (External Monitor) [400%] | 112h | 78,230,000 | High | R-14 | 50 |
| 32 | 4.2 | Functional Testing (FT) Report |  | 14d | 2026-06-11 08:00 | 2026-06-30 17:00 | 17, 18, 21, 22, 25, 26 | 0d |  | Lê Thị Mai Anh (QC / Tester Lead); Postman (Team); Trần Văn Trung (QA Lead); SonarQube (Code Quality) [0.1%]; Laptop Developer [400%]; Màn hình phụ (External Monitor) [400%] | 224h | 95,410,000 | High | R-15 | 50 |
| 33 | 4.3 | Integration Testing (IT) Report |  | 10d | 2026-06-16 08:00 | 2026-06-29 17:00 | 32SS+3d | 0d |  | Lê Thị Mai Anh (QC / Tester Lead); Postman (Team); Trần Văn Trung (QA Lead); SonarQube (Code Quality) [0.1%]; Laptop Developer [400%]; Màn hình phụ (External Monitor) [400%] | 160h | 86,450,000 | High | R-16 | 60 |
| 34 | 4.4 | Performance & Security Testing |  | 10d | 2026-06-16 08:00 | 2026-06-29 17:00 | 32SS+3d | 0d |  | Lê Thị Mai Anh (QC / Tester Lead); AWS WAF + Shield [0.1%]; Load Testing Tool (k6 Cloud / BlazeMeter) [0.1%]; Penetration Testing (Security Audit) [0.1%]; Trần Văn Trung (QA Lead); Laptop Developer [400%]; Màn hình phụ (External Monitor) [400%] | 160h | 102,400,000 | High | R-17 | 30 |
| 35 | 4.5 | UAT Report & Sign-off |  | 7d | 2026-06-30 08:00 | 2026-07-08 17:00 | 33, 34 | 0d |  | Lê Thị Mai Anh (QC / Tester Lead); Nhân viên Lễ tân (Đại diện); Trần Thị Hương (Hotel Operations Director); Trần Văn Trung (QA Lead) | 224h | 15,680,000 | High | R-18 | 40 |
| 36 | 4.6 | UAT Sign-off (Hệ thống sẵn sàng triển khai) | milestone | 0d | 2026-02-05 08:00 | 2026-02-05 08:00 |  | 141d |  |  |  |  |  |  |  |
| 37 | 5 | **Triển khai & Đào tạo** |  | 120d | 2026-02-05 08:00 | 2026-07-22 17:00 |  | 21d |  |  | 376h | 110,330,000 |  |  |  |
| 38 | 5.1 | Production Deployment |  | 5d | 2026-07-09 08:00 | 2026-07-15 17:00 | 35 | 0d |  | AWS CloudFront (CDN) [0.1%]; AWS EC2 (Web Server) [0.1%]; AWS RDS (Database) [0.1%]; AWS S3 (Storage) [0.1%]; AWS WAF + Shield [0.1%]; Backup & Disaster Recovery (AWS Backup) [0.1%]; Nguyễn Văn Tiến (DevOps Lead); SSL Certificate (Wildcard) [0.1%]; Laptop Developer [300%]; Màn hình phụ (External Monitor) [300%] | 40h | 66,900,000 | High | R-19 | 50 |
| 39 | 5.2 | Monitoring & Alerting Setup |  | 3d | 2026-07-13 08:00 | 2026-07-15 17:00 | 38SS+2d | 0d |  | Backup & Disaster Recovery (AWS Backup) [0.1%]; Monitoring (Datadog / New Relic) [0.1%]; Nguyễn Văn Tiến (DevOps Lead); Trần Thị Hương (Hotel Operations Director) | 48h | 7,350,000 | High | R-20 | 20 |
| 40 | 5.3 | User Training & Documentation |  | 7d | 2026-07-10 08:00 | 2026-07-20 17:00 | 38SS+1d | 23d |  | Nguyễn Trung Nguyên (AI & Analytics / BA Lead); Nguyễn Trần Gia Sĩ (Project Manager (PM)); Nhân viên Lễ tân (Đại diện); Notion / Confluence (Standard) | 168h | 20,080,000 | High | R-21 | 30 |
| 41 | 5.4 | Handover Package |  | 5d | 2026-07-16 08:00 | 2026-07-22 17:00 | 38, 39 | 0d |  | Nguyễn Trần Gia Sĩ (Project Manager (PM)); Nguyễn Hoàng Nguyên Vũ (Backend Developer Lead); Phòng Kế toán – Tài chính (Stakeholder nội bộ) | 120h | 16,000,000 | Medium |  | 30 |
| 42 | 5.5 | Go-Live & Bàn giao thành công | milestone | 0d | 2026-02-05 08:00 | 2026-02-05 08:00 |  | 141d |  |  |  |  |  |  |  |
| 43 | 6 | **Kết thúc dự án** |  | 141d | 2026-02-05 08:00 | 2026-08-20 17:00 |  | 0d |  |  | 344h | 48,920,000 |  |  |  |
| 44 | 6.1 | Project Closure Report |  | 5d | 2026-07-23 08:00 | 2026-07-29 17:00 | 41 | 0d |  | Monitoring (Datadog / New Relic) [0.1%]; Nguyễn Trần Gia Sĩ (Project Manager (PM)); Nguyễn Văn Minh (Project Sponsor / CEO) [50%]; Notion / Confluence (Standard); Phòng Kế toán – Tài chính (Stakeholder nội bộ) | 100h | 9,600,000 | High | R-22 | 20 |
| 45 | 6.2 | Post-Implementation Review |  | 5d | 2026-08-12 08:00 | 2026-08-18 17:00 | 44FF+14d | 0d |  | Nguyễn Trần Gia Sĩ (Project Manager (PM)); Nguyễn Trung Nguyên (AI & Analytics / BA Lead); Nguyễn Văn Minh (Project Sponsor / CEO) [50%]; Notion / Confluence (Standard) | 100h | 14,800,000 | High | R-23 | 50 |
| 46 | 6.3 | Project Archive |  | 2d | 2026-08-19 08:00 | 2026-08-20 17:00 | 45 | 0d |  | Nguyễn Trung Nguyên (AI & Analytics / BA Lead); Nguyễn Trần Gia Sĩ (Project Manager (PM)); Notion / Confluence (Standard) | 32h | 6,880,000 | High |  | 50 |
| 47 | 6.4 | Đóng dự án chính thức | milestone | 0d | 2026-02-05 08:00 | 2026-02-05 08:00 |  | 141d |  |  |  |  |  |  |  |
| 49 | 6.5 | **Weekly Status Report** |  | 135.12d | 2026-02-06 08:00 | 2026-08-14 09:00 |  | 4.88d |  |  | 28h | 4,200,000 |  |  |  |
| 50 | 6.5.1 | Weekly Status Report 1 |  | 1h | 2026-02-06 08:00 | 2026-02-06 09:00 |  | 139.88d | start no earlier than 2026-02-06 08:00 | Nguyễn Trần Gia Sĩ (Project Manager (PM)) | 1h | 150,000 |  |  |  |
| 51 | 6.5.2 | Weekly Status Report 2 |  | 1h | 2026-02-13 08:00 | 2026-02-13 09:00 |  | 134.88d | start no earlier than 2026-02-13 08:00 | Nguyễn Trần Gia Sĩ (Project Manager (PM)) | 1h | 150,000 |  |  |  |
| 52 | 6.5.3 | Weekly Status Report 3 |  | 1h | 2026-02-20 08:00 | 2026-02-20 09:00 |  | 129.88d | start no earlier than 2026-02-20 08:00 | Nguyễn Trần Gia Sĩ (Project Manager (PM)) | 1h | 150,000 |  |  |  |
| 53 | 6.5.4 | Weekly Status Report 4 |  | 1h | 2026-02-27 08:00 | 2026-02-27 09:00 |  | 124.88d | start no earlier than 2026-02-27 08:00 | Nguyễn Trần Gia Sĩ (Project Manager (PM)) | 1h | 150,000 |  |  |  |
| 54 | 6.5.5 | Weekly Status Report 5 |  | 1h | 2026-03-06 08:00 | 2026-03-06 09:00 |  | 119.88d | start no earlier than 2026-03-06 08:00 | Nguyễn Trần Gia Sĩ (Project Manager (PM)) | 1h | 150,000 |  |  |  |
| 55 | 6.5.6 | Weekly Status Report 6 |  | 1h | 2026-03-13 08:00 | 2026-03-13 09:00 |  | 114.88d | start no earlier than 2026-03-13 08:00 | Nguyễn Trần Gia Sĩ (Project Manager (PM)) | 1h | 150,000 |  |  |  |
| 56 | 6.5.7 | Weekly Status Report 7 |  | 1h | 2026-03-20 08:00 | 2026-03-20 09:00 |  | 109.88d | start no earlier than 2026-03-20 08:00 | Nguyễn Trần Gia Sĩ (Project Manager (PM)) | 1h | 150,000 |  |  |  |
| 57 | 6.5.8 | Weekly Status Report 8 |  | 1h | 2026-03-27 08:00 | 2026-03-27 09:00 |  | 104.88d | start no earlier than 2026-03-27 08:00 | Nguyễn Trần Gia Sĩ (Project Manager (PM)) | 1h | 150,000 |  |  |  |
| 58 | 6.5.9 | Weekly Status Report 9 |  | 1h | 2026-04-03 08:00 | 2026-04-03 09:00 |  | 99.88d | start no earlier than 2026-04-03 08:00 | Nguyễn Trần Gia Sĩ (Project Manager (PM)) | 1h | 150,000 |  |  |  |
| 59 | 6.5.10 | Weekly Status Report 10 |  | 1h | 2026-04-10 08:00 | 2026-04-10 09:00 |  | 94.88d | start no earlier than 2026-04-10 08:00 | Nguyễn Trần Gia Sĩ (Project Manager (PM)) | 1h | 150,000 |  |  |  |
| 60 | 6.5.11 | Weekly Status Report 11 |  | 1h | 2026-04-17 08:00 | 2026-04-17 09:00 |  | 89.88d | start no earlier than 2026-04-17 08:00 | Nguyễn Trần Gia Sĩ (Project Manager (PM)) | 1h | 150,000 |  |  |  |
| 61 | 6.5.12 | Weekly Status Report 12 |  | 1h | 2026-04-24 08:00 | 2026-04-24 09:00 |  | 84.88d | start no earlier than 2026-04-24 08:00 | Nguyễn Trần Gia Sĩ (Project Manager (PM)) | 1h | 150,000 |  |  |  |
| 62 | 6.5.13 | Weekly Status Report 13 |  | 1h | 2026-05-01 08:00 | 2026-05-01 09:00 |  | 79.88d | start no earlier than 2026-05-01 08:00 | Nguyễn Trần Gia Sĩ (Project Manager (PM)) | 1h | 150,000 |  |  |  |
| 63 | 6.5.14 | Weekly Status Report 14 |  | 1h | 2026-05-08 08:00 | 2026-05-08 09:00 |  | 74.88d | start no earlier than 2026-05-08 08:00 | Nguyễn Trần Gia Sĩ (Project Manager (PM)) | 1h | 150,000 |  |  |  |
| 64 | 6.5.15 | Weekly Status Report 15 |  | 1h | 2026-05-15 08:00 | 2026-05-15 09:00 |  | 69.88d | start no earlier than 2026-05-15 08:00 | Nguyễn Trần Gia Sĩ (Project Manager (PM)) | 1h | 150,000 |  |  |  |
| 65 | 6.5.16 | Weekly Status Report 16 |  | 1h | 2026-05-22 08:00 | 2026-05-22 09:00 |  | 64.88d | start no earlier than 2026-05-22 08:00 | Nguyễn Trần Gia Sĩ (Project Manager (PM)) | 1h | 150,000 |  |  |  |
| 66 | 6.5.17 | Weekly Status Report 17 |  | 1h | 2026-05-29 08:00 | 2026-05-29 09:00 |  | 59.88d | start no earlier than 2026-05-29 08:00 | Nguyễn Trần Gia Sĩ (Project Manager (PM)) | 1h | 150,000 |  |  |  |
| 67 | 6.5.18 | Weekly Status Report 18 |  | 1h | 2026-06-05 08:00 | 2026-06-05 09:00 |  | 54.88d | start no earlier than 2026-06-05 08:00 | Nguyễn Trần Gia Sĩ (Project Manager (PM)) | 1h | 150,000 |  |  |  |
| 68 | 6.5.19 | Weekly Status Report 19 |  | 1h | 2026-06-12 08:00 | 2026-06-12 09:00 |  | 49.88d | start no earlier than 2026-06-12 08:00 | Nguyễn Trần Gia Sĩ (Project Manager (PM)) | 1h | 150,000 |  |  |  |
| 69 | 6.5.20 | Weekly Status Report 20 |  | 1h | 2026-06-19 08:00 | 2026-06-19 09:00 |  | 44.88d | start no earlier than 2026-06-19 08:00 | Nguyễn Trần Gia Sĩ (Project Manager (PM)) | 1h | 150,000 |  |  |  |
| 70 | 6.5.21 | Weekly Status Report 21 |  | 1h | 2026-06-26 08:00 | 2026-06-26 09:00 |  | 39.88d | start no earlier than 2026-06-26 08:00 | Nguyễn Trần Gia Sĩ (Project Manager (PM)) | 1h | 150,000 |  |  |  |
| 71 | 6.5.22 | Weekly Status Report 22 |  | 1h | 2026-07-03 08:00 | 2026-07-03 09:00 |  | 34.88d | start no earlier than 2026-07-03 08:00 | Nguyễn Trần Gia Sĩ (Project Manager (PM)) | 1h | 150,000 |  |  |  |
| 72 | 6.5.23 | Weekly Status Report 23 |  | 1h | 2026-07-10 08:00 | 2026-07-10 09:00 |  | 29.88d | start no earlier than 2026-07-10 08:00 | Nguyễn Trần Gia Sĩ (Project Manager (PM)) | 1h | 150,000 |  |  |  |
| 73 | 6.5.24 | Weekly Status Report 24 |  | 1h | 2026-07-17 08:00 | 2026-07-17 09:00 |  | 24.88d | start no earlier than 2026-07-17 08:00 | Nguyễn Trần Gia Sĩ (Project Manager (PM)) | 1h | 150,000 |  |  |  |
| 74 | 6.5.25 | Weekly Status Report 25 |  | 1h | 2026-07-24 08:00 | 2026-07-24 09:00 |  | 19.88d | start no earlier than 2026-07-24 08:00 | Nguyễn Trần Gia Sĩ (Project Manager (PM)) | 1h | 150,000 |  |  |  |
| 75 | 6.5.26 | Weekly Status Report 26 |  | 1h | 2026-07-31 08:00 | 2026-07-31 09:00 |  | 14.88d | start no earlier than 2026-07-31 08:00 | Nguyễn Trần Gia Sĩ (Project Manager (PM)) | 1h | 150,000 |  |  |  |
| 76 | 6.5.27 | Weekly Status Report 27 |  | 1h | 2026-08-07 08:00 | 2026-08-07 09:00 |  | 9.88d | start no earlier than 2026-08-07 08:00 | Nguyễn Trần Gia Sĩ (Project Manager (PM)) | 1h | 150,000 |  |  |  |
| 77 | 6.5.28 | Weekly Status Report 28 |  | 1h | 2026-08-14 08:00 | 2026-08-14 09:00 |  | 4.88d | start no earlier than 2026-08-14 08:00 | Nguyễn Trần Gia Sĩ (Project Manager (PM)) | 1h | 150,000 |  |  |  |

Notes:
- 31: Thiếu test case, dễ bỏ sót lỗi. Cần review test plan trước khi test. / Risk Owner: Nguyễn Trung Nguyên (AI & Analytics / BA Lead), Lê Thị Mai Anh (QC / Tester Lead)
- 32: Nhiều bug do test chưa đủ. Cần tăng test coverage và regression test. / Risk Owner: Nguyễn Trung Nguyên (AI & Analytics / BA Lead), Lê Thị Mai Anh (QC / Tester Lead)
- 33: Thiếu test scenario quan trọng. Cần bổ sung case edge-case. / Risk Owner: Nguyễn Trung Nguyên (AI & Analytics / BA Lead), Lê Thị Mai Anh (QC / Tester Lead)
- 34: Lỗi integration giữa module. Cần test end-to-end. / Risk Owner: Nguyễn Trung Nguyên (AI & Analytics / BA Lead), Lê Thị Mai Anh (QC / Tester Lead)
- 35: Performance kém khi tải cao. Cần optimize và test sớm. / Risk Owner: Nguyễn Trung Nguyên (AI & Analytics / BA Lead), Lê Thị Mai Anh (QC / Tester Lead)
- 38: Deploy có thể fail do sai config. Cần dry-run trước khi release. / Risk Owner: Nguyễn Văn Tiến (DevOps Lead)
- 39: Không có rollback khi lỗi. Cần chuẩn bị backup và plan rollback. / Risk Owner: Nguyễn Văn Tiến (DevOps Lead)
- 40: User không feedback khi training. Cần follow up và hỗ trợ. / Risk Owner: Nguyễn Trung Nguyên (AI & Analytics / BA Lead)
- 41: Tài liệu bàn giao không đầy đủ hoặc thiếu chi tiết, gây khó khăn cho team tiếp nhận. Cần checklist và review trước khi bàn giao. / Risk Owner: Nguyễn Trần Gia Sĩ (Project Manager (PM))
- 44: Over budget do phát sinh ngoài kế hoạch. Cần kiểm soát chi phí. / Risk Owner: Nguyễn Trung Nguyên (AI & Analytics / BA Lead)
- 45: Report trễ, ảnh hưởng tổng kết. Cần chuẩn bị trước. / Risk Owner: Nguyễn Trần Gia Sĩ (Project Manager (PM))
- 46: Issue nhỏ phát sinh cuối dự án. Cần theo dõi và xử lý nhanh. / Risk Owner: Nguyễn Trần Gia Sĩ (Project Manager (PM))

| ID | WBS | Task | Duration | Start | Finish | Total slack | Constraint | Resources | Work | Cost |
| --- | --- | --- | --- | --- | --- | --- | --- | --- | --- | --- |
| 78 | 6.6 | **Sprint Review & Demo** | 130.12d | 2026-02-09 08:00 | 2026-08-10 09:00 | 8.88d |  |  | 84h | 13,440,000 |
| 79 | 6.6.1 | Sprint Review & Demo 1 | 1h | 2026-02-09 08:00 | 2026-02-09 09:00 | 138.88d | start no earlier than 2026-02-09 08:00 | Nguyễn Hoàng Nguyên Vũ (Backend Developer Lead); Nguyễn Trần Gia Sĩ (Project Manager (PM)); Nguyễn Trung Nguyên (AI & Analytics / BA Lead); Nguyễn Văn Minh (Project Sponsor / CEO); Nguyễn Văn Tiến (DevOps Lead); Trần Văn Trung (QA Lead) | 6h | 960,000 |
| 80 | 6.6.2 | Sprint Review & Demo 2 | 1h | 2026-02-23 08:00 | 2026-02-23 09:00 | 128.88d | start no earlier than 2026-02-23 08:00 | Nguyễn Hoàng Nguyên Vũ (Backend Developer Lead); Nguyễn Trần Gia Sĩ (Project Manager (PM)); Nguyễn Trung Nguyên (AI & Analytics / BA Lead); Nguyễn Văn Minh (Project Sponsor / CEO); Nguyễn Văn Tiến (DevOps Lead); Trần Văn Trung (QA Lead) | 6h | 960,000 |
| 81 | 6.6.3 | Sprint Review & Demo 3 | 1h | 2026-03-09 08:00 | 2026-03-09 09:00 | 118.88d | start no earlier than 2026-03-09 08:00 | Nguyễn Hoàng Nguyên Vũ (Backend Developer Lead); Nguyễn Trần Gia Sĩ (Project Manager (PM)); Nguyễn Trung Nguyên (AI & Analytics / BA Lead); Nguyễn Văn Minh (Project Sponsor / CEO); Nguyễn Văn Tiến (DevOps Lead); Trần Văn Trung (QA Lead) | 6h | 960,000 |
| 82 | 6.6.4 | Sprint Review & Demo 4 | 1h | 2026-03-23 08:00 | 2026-03-23 09:00 | 108.88d | start no earlier than 2026-03-23 08:00 | Nguyễn Hoàng Nguyên Vũ (Backend Developer Lead); Nguyễn Trần Gia Sĩ (Project Manager (PM)); Nguyễn Trung Nguyên (AI & Analytics / BA Lead); Nguyễn Văn Minh (Project Sponsor / CEO); Nguyễn Văn Tiến (DevOps Lead); Trần Văn Trung (QA Lead) | 6h | 960,000 |
| 83 | 6.6.5 | Sprint Review & Demo 5 | 1h | 2026-04-06 08:00 | 2026-04-06 09:00 | 98.88d | start no earlier than 2026-04-06 08:00 | Nguyễn Hoàng Nguyên Vũ (Backend Developer Lead); Nguyễn Trần Gia Sĩ (Project Manager (PM)); Nguyễn Trung Nguyên (AI & Analytics / BA Lead); Nguyễn Văn Minh (Project Sponsor / CEO); Nguyễn Văn Tiến (DevOps Lead); Trần Văn Trung (QA Lead) | 6h | 960,000 |
| 84 | 6.6.6 | Sprint Review & Demo 6 | 1h | 2026-04-20 08:00 | 2026-04-20 09:00 | 88.88d | start no earlier than 2026-04-20 08:00 | Nguyễn Hoàng Nguyên Vũ (Backend Developer Lead); Nguyễn Trần Gia Sĩ (Project Manager (PM)); Nguyễn Trung Nguyên (AI & Analytics / BA Lead); Nguyễn Văn Minh (Project Sponsor / CEO); Nguyễn Văn Tiến (DevOps Lead); Trần Văn Trung (QA Lead) | 6h | 960,000 |
| 85 | 6.6.7 | Sprint Review & Demo 7 | 1h | 2026-05-04 08:00 | 2026-05-04 09:00 | 78.88d | start no earlier than 2026-05-04 08:00 | Nguyễn Hoàng Nguyên Vũ (Backend Developer Lead); Nguyễn Trần Gia Sĩ (Project Manager (PM)); Nguyễn Trung Nguyên (AI & Analytics / BA Lead); Nguyễn Văn Minh (Project Sponsor / CEO); Nguyễn Văn Tiến (DevOps Lead); Trần Văn Trung (QA Lead) | 6h | 960,000 |
| 86 | 6.6.8 | Sprint Review & Demo 8 | 1h | 2026-05-18 08:00 | 2026-05-18 09:00 | 68.88d | start no earlier than 2026-05-18 08:00 | Nguyễn Hoàng Nguyên Vũ (Backend Developer Lead); Nguyễn Trần Gia Sĩ (Project Manager (PM)); Nguyễn Trung Nguyên (AI & Analytics / BA Lead); Nguyễn Văn Minh (Project Sponsor / CEO); Nguyễn Văn Tiến (DevOps Lead); Trần Văn Trung (QA Lead) | 6h | 960,000 |
| 87 | 6.6.9 | Sprint Review & Demo 9 | 1h | 2026-06-01 08:00 | 2026-06-01 09:00 | 58.88d | start no earlier than 2026-06-01 08:00 | Nguyễn Hoàng Nguyên Vũ (Backend Developer Lead); Nguyễn Trần Gia Sĩ (Project Manager (PM)); Nguyễn Trung Nguyên (AI & Analytics / BA Lead); Nguyễn Văn Minh (Project Sponsor / CEO); Nguyễn Văn Tiến (DevOps Lead); Trần Văn Trung (QA Lead) | 6h | 960,000 |
| 88 | 6.6.10 | Sprint Review & Demo 10 | 1h | 2026-06-15 08:00 | 2026-06-15 09:00 | 48.88d | start no earlier than 2026-06-15 08:00 | Nguyễn Hoàng Nguyên Vũ (Backend Developer Lead); Nguyễn Trần Gia Sĩ (Project Manager (PM)); Nguyễn Trung Nguyên (AI & Analytics / BA Lead); Nguyễn Văn Minh (Project Sponsor / CEO); Nguyễn Văn Tiến (DevOps Lead); Trần Văn Trung (QA Lead) | 6h | 960,000 |
| 89 | 6.6.11 | Sprint Review & Demo 11 | 1h | 2026-06-29 08:00 | 2026-06-29 09:00 | 38.88d | start no earlier than 2026-06-29 08:00 | Nguyễn Hoàng Nguyên Vũ (Backend Developer Lead); Nguyễn Trần Gia Sĩ (Project Manager (PM)); Nguyễn Trung Nguyên (AI & Analytics / BA Lead); Nguyễn Văn Minh (Project Sponsor / CEO); Nguyễn Văn Tiến (DevOps Lead); Trần Văn Trung (QA Lead) | 6h | 960,000 |
| 90 | 6.6.12 | Sprint Review & Demo 12 | 1h | 2026-07-13 08:00 | 2026-07-13 09:00 | 28.88d | start no earlier than 2026-07-13 08:00 | Nguyễn Hoàng Nguyên Vũ (Backend Developer Lead); Nguyễn Trần Gia Sĩ (Project Manager (PM)); Nguyễn Trung Nguyên (AI & Analytics / BA Lead); Nguyễn Văn Minh (Project Sponsor / CEO); Nguyễn Văn Tiến (DevOps Lead); Trần Văn Trung (QA Lead) | 6h | 960,000 |
| 91 | 6.6.13 | Sprint Review & Demo 13 | 1h | 2026-07-27 08:00 | 2026-07-27 09:00 | 18.88d | start no earlier than 2026-07-27 08:00 | Nguyễn Hoàng Nguyên Vũ (Backend Developer Lead); Nguyễn Trần Gia Sĩ (Project Manager (PM)); Nguyễn Trung Nguyên (AI & Analytics / BA Lead); Nguyễn Văn Minh (Project Sponsor / CEO); Nguyễn Văn Tiến (DevOps Lead); Trần Văn Trung (QA Lead) | 6h | 960,000 |
| 92 | 6.6.14 | Sprint Review & Demo 14 | 1h | 2026-08-10 08:00 | 2026-08-10 09:00 | 8.88d | start no earlier than 2026-08-10 08:00 | Nguyễn Hoàng Nguyên Vũ (Backend Developer Lead); Nguyễn Trần Gia Sĩ (Project Manager (PM)); Nguyễn Trung Nguyên (AI & Analytics / BA Lead); Nguyễn Văn Minh (Project Sponsor / CEO); Nguyễn Văn Tiến (DevOps Lead); Trần Văn Trung (QA Lead) | 6h | 960,000 |
